# BS Beauty Academy

Schedule from ProjectLibre, 2025-03-18 to 2025-11-28, 1 hours a day.

## Calendars

- Padrão: Mon-Fri 08:00-09:00; Sat-Sun off.

## Resources

| Resource | Rate |
| --- | --- |
| Não atribuído |  |
| Sumário |  |
| Recursos Humanos |  |
| Gestão |  |
| Alyson | 75 |
| Desenvolvimento |  |
| Bruno | 31.25 |
| Eliel | 31.25 |
| Henrique | 31.25 |
| Henrriky | 93.75 |
| Documentação |  |
| Giovanna | 18.75 |
| Recursos Materiais |  |
| Computador |  |

## Schedule

| ID | WBS | Task | Duration | Start | Finish | Predecessors | Complete | Constraint | Resources |
| --- | --- | --- | --- | --- | --- | --- | --- | --- | --- |
| 1 | 1 | **Sistema para Gerenciamento de Salão de Beleza** | 183d | 2025-03-18 | 2025-11-28 |  | 36% |  |  |
| 2 | 1.1 | Início do Projeto | 0d | 2025-03-18 | 2025-03-18 |  |  | start no earlier than 2025-03-18 |  |
| 4 | 1.2 | **Planejamento do Projeto (SPOPIE1)** | 81d | 2025-03-18 | 2025-07-08 | 2SS | 55% |  |  |
| 6 | 1.2.1 | **Etapa 1: Definição do Tema** | 16d | 2025-03-18 | 2025-04-08 |  | 100% | start no earlier than 2025-03-18 |  |
| 7 | 1.2.1.1 | Definição da equipe | 2d | 2025-03-18 | 2025-03-19 |  | 100% |  | Alyson [70%] |
| 8 | 1.2.1.2 | Busca da entidade parceira | 2d | 2025-03-20 | 2025-03-21 | 7 | 100% |  | Henrriky [95%] |
| 9 | 1.2.1.3 | Entrevista e alinhamento com entidade parceira | 6d | 2025-03-24 | 2025-03-31 | 8 | 100% |  | Alyson [50%]; Henrriky [50%] |
| 10 | 1.2.1.4 | Elaboração e apresentação do tema | 6d | 2025-04-01 | 2025-04-08 | 9 | 100% |  | Alyson [10%]; Bruno [10%]; Eliel [10%]; Henrique [10%]; Henrriky [10%]; Giovanna [30%] |
| 11 | 1.2.1.5 | Aprovação do Tema | 0d | 2025-04-08 | 2025-04-08 | 10, 12 |  | start no earlier than 2025-04-08 |  |
| 12 | 1.2.1.6 | Preenchimento da 1ª tabela de autoavaliação | 15d | 2025-03-18 | 2025-04-07 |  | 100% |  | Alyson [5%]; Bruno [5%]; Eliel [5%]; Henrique [5%]; Henrriky [5%]; Giovanna [5%] |
| 14 | 1.2.2 | **Etapa 2: Desenho da Aplicação** | 19d | 2025-04-09 | 2025-05-05 | 11SS | 100% |  |  |
| 15 | 1.2.2.1 | **Elicitação de Requisitos** | 19d | 2025-04-09 | 2025-05-05 |  | 100% |  |  |
| 16 | 1.2.2.1.1 | Levantamento das regras de negócio | 7d | 2025-04-09 | 2025-04-17 |  | 100% |  | Alyson [50%] |
| 17 | 1.2.2.1.2 | Criação de histórias de usuários | 7d | 2025-04-09 | 2025-04-17 |  | 100% |  | Alyson |
| 18 | 1.2.2.1.3 | Análise de requisitos | 8d | 2025-04-18 | 2025-04-29 | 16, 17 | 100% |  | Alyson [40%]; Bruno [30%]; Eliel [30%] |
| 19 | 1.2.2.1.4 | Formalização dos requisitos | 2d | 2025-04-30 | 2025-05-01 | 18 | 100% |  | Alyson [30%]; Bruno [50%] |
| 20 | 1.2.2.1.5 | Validação dos requisitos | 2d | 2025-05-02 | 2025-05-05 | 19 | 100% |  | Henrriky |
| 21 | 1.2.2.2 | **Confecção de Diagramas** | 14d | 2025-04-09 | 2025-04-29 |  | 100% |  |  |
| 22 | 1.2.2.2.1 | Estudo de diagramas | 7d | 2025-04-09 | 2025-04-17 |  | 100% |  | Henrriky [50%]; Henrique [50%] |
| 23 | 1.2.2.2.2 | Criação do diagrama de componentes | 7d | 2025-04-18 | 2025-04-28 | 22 | 100% |  | Henrique [50%]; Henrriky [50%] |
| 24 | 1.2.2.2.3 | Criação do diagrama de implantação | 7d | 2025-04-18 | 2025-04-28 | 22 | 100% |  | Henrique [50%]; Henrriky [50%] |
| 25 | 1.2.2.2.4 | Elaboração e preparação para apresentação dos diagramas | 6d | 2025-04-21 | 2025-04-28 | 23SS, 24SS | 100% | as late as possible | Henrique [50%]; Henrriky [50%] |
| 26 | 1.2.2.2.5 | Entrega do Desenho da Aplicação | 0d | 2025-04-29 | 2025-04-29 | 25, 27 |  | must finish on 2025-04-29 |  |
| 27 | 1.2.2.3 | Preenchimento da 2ª tabela de autoavaliação | 14d | 2025-04-09 | 2025-04-28 |  | 100% | as late as possible | Alyson [5%]; Bruno [5%]; Eliel [5%]; Henrique [5%]; Henrriky [5%]; Giovanna [5%] |

| ID | WBS | Task | Duration | Start | Finish | Predecessors | Complete | Constraint | Resources |
| --- | --- | --- | --- | --- | --- | --- | --- | --- | --- |
| 29 | 1.2.3 | **Etapa 3: Gestão do Projeto** | 30d | 2025-04-09 | 2025-05-20 | 11SS | 57% |  |  |
| 30 | 1.2.3.1 | Definição das metodologias de gestão e desenvolvimento | 2d | 2025-04-09 | 2025-04-10 |  | 100% |  | Alyson |
| 31 | 1.2.3.2 | Escolha e configuração da ferramenta de gestão | 4d | 2025-04-11 | 2025-04-16 | 30 | 100% |  | Alyson |
| 32 | 1.2.3.3 | **Planejamento do Scrum** | 24d | 2025-04-17 | 2025-05-20 | 31 | 46% |  |  |
| 33 | 1.2.3.3.1 | Definição dos papéis do Scrum | 2d | 2025-04-17 | 2025-04-18 |  | 100% |  | Alyson |
| 34 | 1.2.3.3.2 | Priorização das histórias de usuário | 2d | 2025-04-21 | 2025-04-22 | 17, 33 | 100% |  | Alyson |
| 35 | 1.2.3.3.3 | Definição dos critérios de pronto | 4d | 2025-04-23 | 2025-04-28 | 34 |  |  | Alyson |
| 36 | 1.2.3.3.4 | Definição do product backlog inicial | 5d | 2025-04-29 | 2025-05-05 | 35 | 100% |  | Alyson |
| 37 | 1.2.3.3.5 | Estimativa de esforço | 2d | 2025-05-06 | 2025-05-07 | 36 | 100% |  | Alyson |
| 38 | 1.2.3.3.6 | Planejamento das sprints | 4d | 2025-05-08 | 2025-05-13 | 37 |  |  | Alyson |
| 39 | 1.2.3.3.7 | Quebra das histórias em tarefas técnicas | 5d | 2025-05-14 | 2025-05-20 | 38 |  |  | Alyson |
| 42 | 1.2.4 | **Etapa 4: Estudo de Plataformas e Tecnologias** | 29d | 2025-04-09 | 2025-05-20 | 11SS, 15SS | 100% |  |  |
| 43 | 1.2.4.1 | Levantamento de requisitos técnicos | 4d | 2025-04-09 | 2025-04-14 |  | 100% |  | Henrriky |
| 44 | 1.2.4.2 | Definição da arquitetura do sistema | 3d | 2025-04-15 | 2025-04-17 | 43 | 100% |  | Henrique |
| 45 | 1.2.4.3 | Análise de tecnologias backend | 7d | 2025-04-18 | 2025-04-28 | 44 | 100% |  | Bruno [50%]; Eliel [50%] |
| 46 | 1.2.4.4 | Análise de tecnologias frontend | 7d | 2025-04-18 | 2025-04-28 | 44 | 100% |  | Bruno [50%]; Eliel [50%] |
| 47 | 1.2.4.5 | Análise de banco de dados | 7d | 2025-04-18 | 2025-04-28 | 44 | 100% |  | Eliel [50%]; Henrique [50%] |
| 48 | 1.2.4.6 | Definição de tecnologias e ferramentas de desenvolvimento | 4d | 2025-04-29 | 2025-05-02 | 45, 46, 47 | 100% |  | Bruno [33.33%]; Eliel [33.33%]; Henrique [33.33%] |
| 49 | 1.2.4.7 | Pesquisa sobre APIs e serviços de terceiros | 10d | 2025-04-15 | 2025-04-28 | 43 | 100% |  | Henrique [50%]; Henrriky [50%] |
| 50 | 1.2.4.8 | Estudo de plataformas de hospedagem e deploy | 10d | 2025-04-15 | 2025-04-28 | 43 | 100% |  | Henrique [50%]; Henrriky [50%] |
| 51 | 1.2.4.9 | Validação das plataformas e tecnologias | 3d | 2025-05-05 | 2025-05-07 | 48, 49, 50 | 100% |  | Henrriky |
| 52 | 1.2.4.10 | Preparação para a prova de conceito | 7d | 2025-05-08 | 2025-05-16 | 51 | 100% |  | Henrique [50%]; Henrriky [50%] |
| 53 | 1.2.4.11 | Prova de Conceito | 0d | 2025-05-20 | 2025-05-20 | 26, 52, 54 |  | must finish on 2025-05-20 |  |
| 54 | 1.2.4.12 | Preenchimento da 3ª tabela de autoavaliação | 15d | 2025-04-29 | 2025-05-19 |  | 100% | as late as possible | Alyson [5%]; Bruno [5%]; Eliel [5%]; Henrique [5%]; Henrriky [5%]; Giovanna [5%] |

| ID | WBS | Task | Duration | Start | Finish | Predecessors | Complete | Resources |
| --- | --- | --- | --- | --- | --- | --- | --- | --- |
| 56 | 1.2.5 | **Etapa 5: Desenvolvimento do MVP** | 54d | 2025-04-09 | 2025-06-24 | 11SS, 15SS, 42SS, 97SS | 96% |  |
| 57 | 1.2.5.1 | **Modelagem do Banco de Dados** | 15d | 2025-04-09 | 2025-04-29 |  | 100% |  |
| 58 | 1.2.5.1.1 | Levantamento das entidades principais | 5d | 2025-04-09 | 2025-04-15 |  | 100% | Eliel [50%]; Bruno [50%] |
| 59 | 1.2.5.1.2 | Definição dos relacionamentos entre entidades | 3d | 2025-04-16 | 2025-04-18 | 58 | 100% | Bruno [50%]; Eliel [50%] |
| 60 | 1.2.5.1.3 | Criação do modelo lógico | 3d | 2025-04-21 | 2025-04-23 | 59 | 100% | Eliel [50%]; Bruno [50%] |
| 61 | 1.2.5.1.4 | Transformação para modelo físico | 2d | 2025-04-24 | 2025-04-25 | 60 | 100% | Eliel [50%]; Bruno [50%] |
| 62 | 1.2.5.1.5 | Criação do schema no Prisma ORM | 2d | 2025-04-28 | 2025-04-29 | 61 | 100% | Henrriky |
| 64 | 1.2.5.2 | **Implementação do Back-End** | 22d | 2025-04-30 | 2025-05-29 | 62 | 100% |  |
| 65 | 1.2.5.2.1 | Configuração inicial do projeto | 2d | 2025-04-30 | 2025-05-01 |  | 100% | Henrriky |
| 66 | 1.2.5.2.2 | Implementação de autenticação com Google OAuth API | 10d | 2025-05-02 | 2025-05-15 | 65 | 100% | Henrriky [50%]; Henrique [50%] |
| 67 | 1.2.5.2.3 | **Desenvolvimento de CRUDs** | 16d | 2025-05-02 | 2025-05-23 | 65 | 100% |  |
| 68 | 1.2.5.2.3.1 | Implementação do CRUD de cliente | 4d | 2025-05-02 | 2025-05-07 |  | 100% | Alyson [25%] |
| 69 | 1.2.5.2.3.2 | Implementação do CRUD de funcionária | 4d | 2025-05-02 | 2025-05-07 |  | 100% | Alyson [25%] |
| 70 | 1.2.5.2.3.3 | Implementação do CRUD de turno | 4d | 2025-05-08 | 2025-05-13 | 69 | 100% | Alyson [50%] |
| 71 | 1.2.5.2.3.4 | Implementação do CRUD de serviço | 4d | 2025-05-02 | 2025-05-07 |  | 100% | Eliel |
| 72 | 1.2.5.2.3.5 | Implementação do CRUD de oferta | 4d | 2025-05-14 | 2025-05-19 | 69, 70, 71 | 100% | Alyson [20%] |
| 73 | 1.2.5.2.3.6 | Implementação do CRUD de agendamento | 4d | 2025-05-20 | 2025-05-23 | 68, 72 | 100% | Alyson [30%] |
| 74 | 1.2.5.2.4 | Criação de endpoints da API REST | 4d | 2025-05-26 | 2025-05-29 | 67, 66 | 100% | Alyson [35%]; Eliel [15%]; Henrique [20%]; Henrriky [30%] |
| 76 | 1.2.5.3 | **Implementação do Front-End** | 29d | 2025-04-30 | 2025-06-09 | 64SS | 93% |  |
| 77 | 1.2.5.3.1 | Configuração inicial do projeto frontend | 2d | 2025-04-30 | 2025-05-01 |  | 100% | Henrriky |
| 78 | 1.2.5.3.2 | Criação inicial do design de telas | 10d | 2025-04-30 | 2025-05-13 |  | 100% | Henrriky [50%]; Bruno [50%] |
| 79 | 1.2.5.3.3 | **Desenvolvimento de Telas** | 10d | 2025-05-14 | 2025-05-27 | 77, 78 | 89% |  |
| 80 | 1.2.5.3.3.1 | Implementação da página inicial da aplicação | 10d | 2025-05-14 | 2025-05-27 |  |  | Bruno |
| 81 | 1.2.5.3.3.2 | Implementação da interface de login/cadastro | 10d | 2025-05-14 | 2025-05-27 |  | 100% | Henrriky |
| 82 | 1.2.5.3.3.3 | Implementação da tela de visualização de serviços | 10d | 2025-05-14 | 2025-05-27 |  | 100% | Henrriky [50%]; Henrique [50%] |
| 83 | 1.2.5.3.3.4 | Implementação da tela de agendamento | 10d | 2025-05-14 | 2025-05-27 |  | 100% | Henrriky [50%]; Henrique [50%] |
| 84 | 1.2.5.3.3.5 | Implementação da tela de criação de serviços | 10d | 2025-05-14 | 2025-05-27 |  | 100% | Alyson [30%] |
| 85 | 1.2.5.3.3.6 | Implementação da tela de turnos | 10d | 2025-05-14 | 2025-05-27 |  | 100% | Henrique |
| 86 | 1.2.5.3.3.7 | Implementação da tela de dashboard inicial | 10d | 2025-05-14 | 2025-05-27 |  | 100% | Eliel |
| 87 | 1.2.5.3.4 | Integração com a API do backend | 7d | 2025-05-30 | 2025-06-09 | 79, 74 | 100% | Henrriky [35%]; Henrique [25%]; Eliel [25%]; Alyson [15%] |

| ID | WBS | Task | Duration | Start | Finish | Predecessors | Complete | Constraint | Resources |
| --- | --- | --- | --- | --- | --- | --- | --- | --- | --- |
| 89 | 1.2.5.4 | **Deploy** | 10d | 2025-06-10 | 2025-06-23 | 64, 76 | 100% |  |  |
| 90 | 1.2.5.4.1 | Configuração de instâncias EC2 | 3d | 2025-06-10 | 2025-06-12 |  | 100% |  | Henrriky [50%]; Henrique [50%] |
| 91 | 1.2.5.4.2 | Configuração de armazenamento e banco de dados | 3d | 2025-06-13 | 2025-06-17 | 90 | 100% |  | Henrriky [50%]; Henrique [50%] |
| 92 | 1.2.5.4.3 | Configuração e deploy da aplicação | 4d | 2025-06-18 | 2025-06-23 | 91 | 100% |  | Henrriky [50%]; Henrique [50%] |
| 93 | 1.2.5.5 | Apresentação do MVP | 0d | 2025-06-24 | 2025-06-24 | 89 |  | must finish on 2025-06-24 |  |
| 95 | 1.2.6 | **Etapa 6: Documentação do Planejamento** | 64d | 2025-03-18 | 2025-06-13 | 2SS | 13% |  |  |
| 96 | 1.2.6.1 | Produção do projectlibre | 60d | 2025-03-24 | 2025-06-13 |  |  |  | Alyson [20%] |
| 97 | 1.2.6.2 | Criação do repositório remoto no GitHub | 2d | 2025-03-18 | 2025-03-19 |  | 100% |  | Henrriky [95%] |
| 98 | 1.2.6.3 | Definição de padronização para arquivos e diretórios da documentação | 2d | 2025-03-20 | 2025-03-21 | 97 | 100% |  | Giovanna [50%]; Alyson [50%] |
| 100 | 1.2.6.4 | **Produção da Documentação** | 56d | 2025-03-24 | 2025-06-09 | 98 | 17% |  |  |
| 101 | 1.2.6.4.1 | Produção do capítulo "Introdução" | 56d | 2025-03-24 | 2025-06-09 | 8SS | 100% |  | Giovanna [10%] |
| 102 | 1.2.6.4.2 | Produção do capítulo "Revisão da Literatura" | 50d | 2025-04-01 | 2025-06-09 | 10SS |  |  | Giovanna [10%] |
| 103 | 1.2.6.4.3 | Produção do capítulo "Gestão do Projeto" | 56d | 2025-03-24 | 2025-06-09 | 7SS | 80% |  | Alyson [10%] |
| 104 | 1.2.6.4.4 | **Produção do Capítulo "Desenvolvimento do Projeto"** | 43d | 2025-04-10 | 2025-06-09 | 14SS, 42SS, 56SS |  | start no earlier than 2025-04-10 |  |
| 105 | 1.2.6.4.4.1 | Produção do tópico "Escopo do Projeto" | 43d | 2025-04-10 | 2025-06-09 | 15SS |  |  | Bruno [10%] |
| 106 | 1.2.6.4.4.2 | Produção do tópico "Histórias de Usuários" | 43d | 2025-04-10 | 2025-06-09 | 15SS |  |  | Bruno [10%] |
| 107 | 1.2.6.4.4.3 | Produção do tópico "Arquitetura" | 43d | 2025-04-10 | 2025-06-09 | 21SS |  |  | Henrriky [10%] |
| 108 | 1.2.6.4.4.4 | Produção do tópico "Tecnologias" | 43d | 2025-04-10 | 2025-06-09 | 42SS |  |  | Henrriky [10%] |
| 109 | 1.2.6.4.4.5 | Produção do tópico "Testes e Manutenibildade" | 43d | 2025-04-10 | 2025-06-09 | 56SS |  |  | Henrique [10%] |
| 110 | 1.2.6.4.4.6 | Produção do tópico "Segurança, Privacidade e Legislação" | 43d | 2025-04-10 | 2025-06-09 | 56SS |  |  | Eliel [10%] |
| 111 | 1.2.6.4.4.7 | Produção do tópico "Modelo de Banco de Dados" | 43d | 2025-04-10 | 2025-06-09 | 56SS |  |  | Eliel [10%] |
| 112 | 1.2.6.4.4.8 | Produção do tópico "Duração / Cronograma" | 43d | 2025-04-10 | 2025-06-09 |  |  |  | Henrique [10%] |
| 113 | 1.2.6.4.4.9 | Produção do tópico "Viabilidade Financeira" | 43d | 2025-04-10 | 2025-06-09 | 42SS |  |  | Alyson [10%] |
| 114 | 1.2.6.4.5 | Produção do tópico "Considerações Finais" | 56d | 2025-03-24 | 2025-06-09 |  |  |  | Giovanna [10%] |
| 116 | 1.2.6.5 | Supervisão do documento | 56d | 2025-03-24 | 2025-06-09 | 100SS, 101FF, 102FF, 103FF, 105FF, 106FF, 107FF, 108FF, 109FF, 110FF, 111FF, 112FF, 114FF |  |  | Giovanna [15%] |
| 118 | 1.2.6.6 | Entrega da Documentação Final | 0d | 2025-06-10 | 2025-06-10 | 116, 120 |  | must finish on 2025-06-10 |  |
| 120 | 1.2.6.7 | Preenchimento da 4ª tabela de autoavaliação | 15d | 2025-05-20 | 2025-06-09 |  |  | as late as possible | Alyson [5%]; Bruno [5%]; Eliel [5%]; Henrique [5%]; Henrriky [5%]; Giovanna [5%] |
| 122 | 1.2.7 | Aprovação na disciplina SPOPIE1 | 0d | 2025-07-08 | 2025-07-08 | 93FS+1.38d, 118 |  |  |  |

| ID | WBS | Task | Duration | Start | Finish | Predecessors | Resources |
| --- | --- | --- | --- | --- | --- | --- | --- |
| 124 | 1.3 | **Desenvolvimento do Sistema (SPOPIE2)** | 79d | 2025-08-11 | 2025-11-28 | 122FS+2.88d |  |
| 125 | 1.3.1 | **Etapa 1: Melhorias no Processo de Agendamento** | 12d | 2025-08-11 | 2025-08-26 | 56 |  |
| 126 | 1.3.1.1 | Refatoração do back-end | 3d | 2025-08-11 | 2025-08-13 |  | Eliel |
| 127 | 1.3.1.2 | Refatoração do front-end | 3d | 2025-08-11 | 2025-08-13 |  | Henrriky |
| 128 | 1.3.1.3 | Correção de bugs existentes | 2d | 2025-08-14 | 2025-08-15 | 126, 127 | Henrique |
| 129 | 1.3.1.4 | Melhorias de UX | 2d | 2025-08-18 | 2025-08-19 | 128 | Bruno |
| 130 | 1.3.1.5 | Criação do design das demais telas do sistema | 3d | 2025-08-20 | 2025-08-22 | 129 | Bruno |
| 131 | 1.3.1.6 | Implementação das regras de negócio faltantes | 3d | 2025-08-20 | 2025-08-22 | 129 | Alyson |
| 132 | 1.3.1.7 | Incrementação na modelagem de dados | 2d | 2025-08-25 | 2025-08-26 | 131 | Eliel |
| 134 | 1.3.2 | **Etapa 2: Implementação do Processo de Aprovação de Novos Serviços** | 10d | 2025-08-27 | 2025-09-09 | 125 |  |
| 135 | 1.3.2.1 | Criação do formulário de sugestão de novo serviço | 2d | 2025-08-27 | 2025-08-28 |  | Eliel |
| 136 | 1.3.2.2 | Implementação da lógica de aprovação/reprovação | 3d | 2025-08-29 | 2025-09-02 | 135 | Henrriky |
| 137 | 1.3.2.3 | Persistência do histórico e justificativa no banco de dados | 2d | 2025-09-03 | 2025-09-04 | 136 | Henrique |
| 138 | 1.3.2.4 | Implementação de tela administrativa para visualização | 3d | 2025-09-05 | 2025-09-09 | 137 | Bruno |
| 140 | 1.3.3 | **Etapa 3: Implementação do Processo de Notificações** | 12d | 2025-09-10 | 2025-09-25 | 134 |  |
| 141 | 1.3.3.1 | Criação de eventos de notificação no back-end | 2d | 2025-09-10 | 2025-09-11 |  | Alyson |
| 142 | 1.3.3.2 | Implementação do envio de e-mail/push para novos agendamentos | 3d | 2025-09-12 | 2025-09-16 | 141 | Henrriky |
| 143 | 1.3.3.3 | Criação de notificações de alteração e cancelamento | 2d | 2025-09-17 | 2025-09-18 | 142 | Eliel |
| 144 | 1.3.3.4 | Definição de lembretes automáticos | 2d | 2025-09-19 | 2025-09-22 | 143 | Henrique |
| 145 | 1.3.3.5 | Implementação de telas para visualização e histórico | 3d | 2025-09-23 | 2025-09-25 | 144 | Bruno |
| 147 | 1.3.4 | **Etapa 4: Implementação do Processo de Geração de Relatórios** | 9d | 2025-09-26 | 2025-10-08 | 140 |  |
| 148 | 1.3.4.1 | **Relatórios de Captação de Clientes** | 6d | 2025-09-26 | 2025-10-03 |  |  |
| 149 | 1.3.4.1.1 | Criação de endpoint de clientes com filtro por canal de origem | 3d | 2025-09-26 | 2025-09-30 |  | Alyson |
| 150 | 1.3.4.1.2 | Implementação do gráfico de crescimento mensal | 3d | 2025-10-01 | 2025-10-03 | 149 | Alyson |

| ID | WBS | Task | Duration | Start | Finish | Predecessors | Resources |
| --- | --- | --- | --- | --- | --- | --- | --- |
| 151 | 1.3.4.2 | **Relatórios de Produtividade** | 6d | 2025-09-26 | 2025-10-03 |  |  |
| 152 | 1.3.4.2.1 | Criação do endpoint para atendimentos por funcionário | 3d | 2025-09-26 | 2025-09-30 |  | Henrriky |
| 153 | 1.3.4.2.2 | Implementação do filtro por período e profissional | 3d | 2025-10-01 | 2025-10-03 | 152 | Henrriky |
| 154 | 1.3.4.3 | **Relatórios Financeiros** | 9d | 2025-09-26 | 2025-10-08 |  |  |
| 155 | 1.3.4.3.1 | Implementação do cálculo de faturamento por serviço | 3d | 2025-09-26 | 2025-09-30 |  | Eliel |
| 156 | 1.3.4.3.2 | Criação do relatório de comissões | 3d | 2025-10-01 | 2025-10-03 | 155 | Eliel |
| 157 | 1.3.4.3.3 | Exportação dados em PDF/Excel | 3d | 2025-10-06 | 2025-10-08 | 156 | Eliel |
| 158 | 1.3.4.4 | **Relatórios de Ocupação** | 6d | 2025-09-26 | 2025-10-03 |  |  |
| 159 | 1.3.4.4.1 | Geração do gráfico de horários ociosos e picos | 3d | 2025-09-26 | 2025-09-30 |  | Henrique |
| 160 | 1.3.4.4.2 | Implementação do cálculo de taxa de ocupação por hora e dia | 3d | 2025-10-01 | 2025-10-03 | 159 | Henrique |
| 162 | 1.3.5 | **Etapa 5: Implementação do Processo de Avaliação de Serviços** | 12d | 2025-10-09 | 2025-10-24 | 147 |  |
| 163 | 1.3.5.1 | Criação do endpoint de envio de avaliação | 3d | 2025-10-09 | 2025-10-13 |  | Henrriky |
| 164 | 1.3.5.2 | Implementação de telas de visualização das avaliações | 3d | 2025-10-14 | 2025-10-16 | 163 | Bruno |
| 165 | 1.3.5.3 | Geração de médias por serviço e por profissional | 3d | 2025-10-17 | 2025-10-21 | 164 | Eliel |
| 166 | 1.3.5.4 | Criação de gráfico e filtro de estatísticas | 3d | 2025-10-22 | 2025-10-24 | 165 | Alyson |
| 168 | 1.3.6 | **Etapa 6: Implementação do Processo de Programa de Indicação** | 12d | 2025-10-27 | 2025-11-11 | 162 |  |
| 169 | 1.3.6.1 | Criação da lógica de geração de códigos únicos | 2d | 2025-10-27 | 2025-10-28 |  | Henrique |
| 170 | 1.3.6.2 | Associação de códigos a novos cadastros | 2d | 2025-10-29 | 2025-10-30 | 169 | Alyson |
| 171 | 1.3.6.3 | Implementação da validação de indicação convertida | 3d | 2025-10-31 | 2025-11-04 | 170 | Henrriky |
| 172 | 1.3.6.4 | Automatização do sistema de recompensas | 2d | 2025-11-05 | 2025-11-06 | 171 | Eliel |
| 173 | 1.3.6.5 | Implementação de tela de histórico de indicações por cliente | 3d | 2025-11-07 | 2025-11-11 | 172 | Bruno |
| 175 | 1.3.7 | **Etapa 7: Implementação do Processo de Mensagens e Descontos de Aniversário** | 8d | 2025-11-12 | 2025-11-21 | 168 |  |
| 176 | 1.3.7.1 | Implementação de verificação automática de aniversariantes | 2d | 2025-11-12 | 2025-11-13 |  | Eliel |
| 177 | 1.3.7.2 | Criação de cupom com validade e regras de uso | 2d | 2025-11-14 | 2025-11-17 | 176 | Henrique |
| 178 | 1.3.7.3 | Criação de template e envio automático por e-mail | 2d | 2025-11-18 | 2025-11-19 | 177 | Henrriky |
| 179 | 1.3.7.4 | Implementação de tela para listar aniversariantes do mês | 2d | 2025-11-20 | 2025-11-21 | 178 | Bruno |

| ID | WBS | Task | Duration | Start | Finish | Predecessors | Complete | Constraint | Resources |
| --- | --- | --- | --- | --- | --- | --- | --- | --- | --- |
| 181 | 1.3.8 | **Etapa 8: Testes e Validação** | 75d | 2025-08-11 | 2025-11-21 |  |  |  |  |
| 182 | 1.3.8.1 | **Testes Automatizados** | 75d | 2025-08-11 | 2025-11-21 |  |  |  |  |
| 183 | 1.3.8.1.1 | Escrita de testes unitários | 69d | 2025-08-11 | 2025-11-13 |  |  |  | Henrique |
| 184 | 1.3.8.1.2 | Escrita de testes de integração | 69d | 2025-08-11 | 2025-11-13 |  |  |  | Henrique |
| 185 | 1.3.8.1.3 | Implementação de esteira CI/CD para testes automatizados | 3d | 2025-11-14 | 2025-11-18 | 183, 184 |  |  | Henrique |
| 186 | 1.3.8.1.4 | Análise estática de código | 3d | 2025-11-19 | 2025-11-21 | 185 |  |  | Henrique |
| 187 | 1.3.8.2 | **Homologação** | 10d | 2025-08-11 | 2025-08-22 |  |  |  |  |
| 188 | 1.3.8.2.1 | Apresentação do sistema para entidade parceira | 5d | 2025-08-11 | 2025-08-15 |  |  |  | Henrriky |
| 189 | 1.3.8.2.2 | Coleta de feedback e sugestões de melhoria | 5d | 2025-08-18 | 2025-08-22 | 188 |  |  | Alyson |
| 190 | 1.3.8.3 | **Auditoria Técnica** | 75d | 2025-08-11 | 2025-11-21 |  |  |  |  |
| 191 | 1.3.8.3.1 | Checklist de conformidade | 75d | 2025-08-11 | 2025-11-21 |  |  |  | Giovanna |
| 192 | 1.3.8.3.2 | Validação de logs | 75d | 2025-08-11 | 2025-11-21 |  |  |  | Giovanna |
| 193 | 1.3.8.3.3 | Autorização e rastreabilidade de dados | 75d | 2025-08-11 | 2025-11-21 |  |  |  | Giovanna |
| 195 | 1.3.9 | **Etapa 9: Deploy da Aplicação** | 10d | 2025-08-11 | 2025-08-22 |  |  |  |  |
| 196 | 1.3.9.1 | Criação de infraestrutura completa no EC2 (AWS) | 10d | 2025-08-11 | 2025-08-22 |  |  |  | Henrique [50%]; Henrriky [50%] |
| 197 | 1.3.9.2 | Configuração de CI/CD para build automático | 10d | 2025-08-11 | 2025-08-22 |  |  |  | Henrique [50%]; Henrriky [50%] |
| 199 | 1.3.10 | **Etapa 10: Fechamento e Entrega Final** | 69d | 2025-08-25 | 2025-11-28 | 187, 195 |  |  |  |
| 200 | 1.3.10.1 | Aplicação de correções finais | 69d | 2025-08-25 | 2025-11-27 |  |  |  | Alyson [50%]; Henrriky [50%] |
| 201 | 1.3.10.2 | Última revisão com stakeholders | 4d | 2025-10-20 | 2025-10-23 |  |  | as late as possible | Henrriky |
| 202 | 1.3.10.3 | Preparação para apresentação final do projeto | 25d | 2025-10-24 | 2025-11-27 | 200SS, 201 |  |  | Alyson [16.67%]; Bruno [16.67%]; Eliel [16.67%]; Henrique [16.67%]; Henrriky [16.67%]; Giovanna [16.67%] |
| 203 | 1.3.10.4 | Fim do Projeto | 0d | 2025-11-28 | 2025-11-28 | 202 |  | must finish on 2025-11-28 |  |
| 205 | 1.4 | **Documentação Geral do Projeto** | 183d | 2025-03-18 | 2025-11-27 |  | 30% |  |  |
| 206 | 1.4.1 | Produção do "Diário de Bordo" do projeto | 183d | 2025-03-18 | 2025-11-27 | 203FF | 30% |  | Giovanna [50%] |
